# Cronograma Seal CD 2

Schedule from MS Project, 2014-04-22 to 2014-08-12, A marks actual dates.

## Calendars

- Padrão: Mon-Fri 09:00-12:00, 13:00-18:00; Sat-Sun off. Exceptions (off unless hours are given): 2014-05-01 to 2014-05-05 (Feriado).

## Schedule

| ID | WBS | Task | Type | Duration | Start | Finish | Predecessors | Complete | Remaining | Total slack | Free slack | Constraint |
| --- | --- | --- | --- | --- | --- | --- | --- | --- | --- | --- | --- | --- |
| 1 | 1 | **Seal Sistemas** |  | 78d | 2014-04-22 A | 2014-08-12 |  | 2% | 76.61d | 0d |  |  |
| 2 | 1.1 | Picking ByVoice CD 2 | milestone | 0d | 2014-04-22 A | 2014-04-22 A |  | 100% |  |  |  | start no earlier than 2014-04-22 |
| 3 | 1.2 | **Equipamentos** |  | 68d | 2014-04-29 | 2014-08-05 |  |  |  | 0d |  |  |
| 4 | 1.2.1 | **Leitores de Código de Barras** |  | 68d | 2014-04-29 | 2014-08-05 |  |  |  | 0d |  |  |
| 5 | 1.2.1.1 | Chegada equipamento Demonstração |  | 1d | 2014-04-29 | 2014-04-29 | 2 |  |  | 0d |  | start no earlier than 2014-04-29 |
| 6 | 1.2.1.2 | Homologação |  | 1d | 2014-04-30 | 2014-04-30 | 5 |  |  | 0d |  |  |
| 7 | 1.2.1.3 | Pedido |  | 1d | 2014-05-06 | 2014-05-06 | 6 |  |  | 0d |  | start no earlier than 2014-05-06 |
| 8 | 1.2.1.4 | Aprovação |  | 20d | 2014-05-07 | 2014-06-03 | 7 |  |  | 0d |  |  |
| 9 | 1.2.1.5 | Importação |  | 45d | 2014-06-04 | 2014-08-05 | 8 |  |  | 0d |  |  |
| 10 | 1.3 | **Iniciação** |  | 6d | 2014-04-23 A | 2014-04-30 |  | 75% | 1.5d | 1.5d |  |  |
| 11 | 1.3.1 | Especificação Funcional de Software |  | 1d | 2014-04-23 A | 2014-04-23 A | 2 | 100% |  |  |  | start no earlier than 2014-04-23 |
| 12 | 1.3.2 | Aprovação da Especificação Funcional |  | 2d | 2014-04-24 A | 2014-04-25 A | 11 | 100% |  |  |  |  |
| 13 | 1.3.3 | Kickoff |  | 1d | 2014-04-30 | 2014-04-30 | 12 |  |  | 1.5d | 0d | start no earlier than 2014-04-30 |
| 14 | 1.4 | **Elaboração** |  | 5d | 2014-05-06 | 2014-05-12 |  |  |  | 3.5d |  |  |
| 15 | 1.4.1 | Revisão das alterações da base de dados |  | 1d | 2014-05-06 | 2014-05-06 | 13 |  |  | 3.5d | 0d |  |
| 16 | 1.4.2 | Modelagem de dados |  | 3d | 2014-05-07 | 2014-05-09 | 15 |  |  | 3.5d | 0d |  |
| 17 | 1.4.3 | Aprovação das alterações da base de dados |  | 1d | 2014-05-12 | 2014-05-12 | 16 |  |  | 3.5d | 0d |  |
| 18 | 1.5 | **Construção** |  | 28d | 2014-05-13 | 2014-06-19 |  |  |  | 3.5d |  |  |
| 19 | 1.5.1 | **Service Import** |  | 5d | 2014-05-13 | 2014-05-19 |  |  |  | 3.5d |  |  |
| 20 | 1.5.1.1 | Alteração do importador para receber cargas do CD 2 |  | 5d | 2014-05-13 | 2014-05-19 | 17 |  |  | 3.5d | 0d |  |
| 21 | 1.5.2 | **Task & Service Listener** |  | 20d | 2014-05-20 | 2014-06-16 |  |  |  | 3.5d |  |  |
| 22 | 1.5.2.1 | Alteração da tarefa de voz |  | 20d | 2014-05-20 | 2014-06-16 | 20 |  |  | 3.5d | 0d |  |
| 23 | 1.5.2.2 | Alteração Service Listener (regras de negócio) |  | 20d | 2014-05-20 | 2014-06-16 | 20 |  |  | 3.5d | 0d |  |
| 24 | 1.5.3 | **Kairos** |  | 3d | 2014-06-17 | 2014-06-19 |  |  |  | 3.5d |  |  |
| 25 | 1.5.3.1 | Alteração da Web Kairos para antecipar ruas em inventário |  | 3d | 2014-06-17 | 2014-06-19 | 23, 22 |  |  | 3.5d | 0d |  |
| 26 | 1.5.4 | Liberação do pacote Kairos para Homologação | milestone | 0d | 2014-06-19 | 2014-06-19 | 25 |  |  | 3.5d | 0d |  |

| ID | WBS | Task | Type | Duration | Start | Finish | Predecessors | Total slack | Free slack |
| --- | --- | --- | --- | --- | --- | --- | --- | --- | --- |
| 27 | 1.6 | **Transição** |  | 38d | 2014-06-20 | 2014-08-12 |  | 0d |  |
| 28 | 1.6.1 | Material de treinamento |  | 5d | 2014-06-20 | 2014-06-26 | 26 | 21.5d | 18d |
| 29 | 1.6.2 | Homologação do sistema |  | 20d | 2014-06-20 | 2014-07-17 | 26 | 3.5d | 0d |
| 30 | 1.6.3 | Aprovação da homologação |  | 1d | 2014-07-18 | 2014-07-18 | 29 | 3.5d | 0d |
| 31 | 1.6.4 | Liberação do pacote para produção | milestone | 0d | 2014-07-18 | 2014-07-18 | 30 | 8d | 0d |
| 32 | 1.6.5 | Germud | milestone | 0d | 2014-07-18 | 2014-07-18 | 31 | 8d | 0d |
| 33 | 1.6.6 | Configuração do ambiente de produção |  | 2d | 2014-07-21 | 2014-07-22 | 32 | 8d | 0d |
| 34 | 1.6.7 | Stress Test em produção para validar o crescimento de terminais sem afetar o CD 1 |  | 2d | 2014-07-23 | 2014-07-24 | 33 | 8d |  |
| 35 | 1.6.8 | Revisão do material de treinamento |  | 2d | 2014-07-21 | 2014-07-22 | 30 | 3.5d | 0d |
| 36 | 1.6.9 | Treinamento de Multiplicadores |  | 2d | 2014-07-23 | 2014-07-24 | 35, 28 | 3.5d | 0d |
| 37 | 1.6.10 | Treinamento de Operadores |  | 4d | 2014-07-25 | 2014-07-30 | 36 | 3.5d | 0d |
| 38 | 1.6.11 | Liberação de Fatex para teste em produção |  | 0.5d | 2014-07-31 | 2014-07-31 | 37 | 3.5d |  |
| 39 | 1.6.12 | Go Live | milestone | 0d | 2014-08-05 | 2014-08-05 | 38, 34, 9 | 0d |  |
| 40 | 1.6.13 | Acompanhamento |  | 5d | 2014-08-06 | 2014-08-12 | 39 | 0d |  |
