# Plano de Implantacao

Schedule from MS Project, 2012-11-12 to 2013-04-16.

## Calendars

- Padrão: Mon-Fri 09:00-12:00, 13:00-18:00; Sat-Sun off.

## Schedule

| ID | WBS | Task | Type | Duration | Start | Finish | Predecessors | Total slack | Free slack |
| --- | --- | --- | --- | --- | --- | --- | --- | --- | --- |
| 1 | 1 | **Kairos Implementation Plan** |  | 112d | 2012-11-12 09:00 | 2013-04-16 18:00 |  | 0d |  |
| 2 | 1.1 | **Iniciação** |  | 2.5d | 2012-11-12 09:00 | 2012-11-14 14:00 |  | 0d |  |
| 3 | 1.1.1 | Proposta Técnica Comercial | milestone | 0d | 2012-11-12 09:00 | 2012-11-12 09:00 |  | 0d |  |
| 4 | 1.1.2 | Reunião de Apresentação da Proposta |  | 0.5d | 2012-11-12 09:00 | 2012-11-12 14:00 | 3 | 0d |  |
| 5 | 1.1.3 | Revisão da Proposta Técnica |  | 1d | 2012-11-12 14:00 | 2012-11-13 14:00 | 4 | 0d |  |
| 6 | 1.1.4 | Aceite da Proposta Técnica |  | 0.5d | 2012-11-13 14:00 | 2012-11-13 18:00 | 5 | 0d |  |
| 7 | 1.1.5 | Kickoff |  | 0.5d | 2012-11-14 09:00 | 2012-11-14 14:00 | 6 | 0d |  |
| 8 | 1.2 | **Elaboração** |  | 27d | 2012-11-14 14:00 | 2012-12-21 14:00 |  | 0d |  |
| 9 | 1.2.1 | **Software** |  | 27d | 2012-11-14 14:00 | 2012-12-21 14:00 |  | 0d |  |
| 10 | 1.2.1.1 | **Levantamento** |  | 20.5d | 2012-11-14 14:00 | 2012-12-12 18:00 |  | 0d |  |
| 11 | 1.2.1.1.1 | Levantamento de Requisitos Funcionais (on site) |  | 15d | 2012-11-14 14:00 | 2012-12-05 14:00 | 7 | 0d |  |
| 12 | 1.2.1.1.2 | Especificação Funcional do Software |  | 3d | 2012-12-05 14:00 | 2012-12-10 14:00 | 11 | 0d |  |
| 13 | 1.2.1.1.3 | Reunião de Apresentação da Especificação Funcional |  | 1d | 2012-12-10 14:00 | 2012-12-11 14:00 | 12 | 0d |  |
| 14 | 1.2.1.1.4 | Revisão da Especificação Funcional |  | 1d | 2012-12-11 14:00 | 2012-12-12 14:00 | 13 | 0d |  |
| 15 | 1.2.1.1.5 | Aceite de Especificação |  | 0.5d | 2012-12-12 14:00 | 2012-12-12 18:00 | 14 | 0d |  |
| 16 | 1.2.1.2 | **Modelagem de Dados** |  | 6.5d | 2012-12-13 09:00 | 2012-12-21 14:00 |  | 0d |  |
| 17 | 1.2.1.2.1 | Modelo Entidade-Relacionamento (MER) |  | 5d | 2012-12-13 09:00 | 2012-12-19 18:00 | 15 | 0d |  |
| 18 | 1.2.1.2.2 | Revisão da Modelagem (MER) |  | 1d | 2012-12-20 09:00 | 2012-12-20 18:00 | 17 | 0d |  |
| 19 | 1.2.1.2.3 | Aceite da Modelagem (MER) |  | 0.5d | 2012-12-21 09:00 | 2012-12-21 14:00 | 18 | 0d |  |
| 20 | 1.2.2 | **Hardware** |  | 3d | 2012-11-14 14:00 | 2012-11-19 14:00 |  | 106.5d |  |
| 21 | 1.2.2.1 | **Levantamento** |  | 3d | 2012-11-14 14:00 | 2012-11-19 14:00 |  | 106.5d |  |
| 22 | 1.2.2.1.1 | Avaliação da infraestrutura de redes |  | 0.5d | 2012-11-14 14:00 | 2012-11-14 18:00 | 7 | 109d |  |
| 23 | 1.2.2.1.2 | Agendamento da Visita on Site | milestone | 0d | 2012-11-14 14:00 | 2012-11-14 14:00 | 7 | 106.5d | 0d |
| 24 | 1.2.2.1.3 | Avaliação da infraestrutura de equipamento RF e Coletores |  | 0.5d | 2012-11-14 14:00 | 2012-11-14 18:00 | 23 | 106.5d | 0d |
| 25 | 1.2.2.1.4 | Site Survey |  | 0.5d | 2012-11-15 09:00 | 2012-11-15 14:00 | 24 | 106.5d | 0d |
| 26 | 1.2.2.1.5 | Relatório de Site Survey |  | 1d | 2012-11-15 14:00 | 2012-11-16 14:00 | 25 | 106.5d | 0d |
| 27 | 1.2.2.1.6 | Revisão do Relatório de Site Survey |  | 0.5d | 2012-11-16 14:00 | 2012-11-16 18:00 | 26 | 106.5d | 0d |
| 28 | 1.2.2.1.7 | Aceite do Relatório de Site Survey |  | 0.5d | 2012-11-19 09:00 | 2012-11-19 14:00 | 27 | 106.5d |  |

| ID | WBS | Task | Type | Duration | Start | Finish | Predecessors | Total slack | Free slack |
| --- | --- | --- | --- | --- | --- | --- | --- | --- | --- |
| 29 | 1.3 | **Construção** |  | 74.5d | 2012-12-21 14:00 | 2013-04-04 18:00 |  | 0d |  |
| 30 | 1.3.1 | **Software** |  | 74.5d | 2012-12-21 14:00 | 2013-04-04 18:00 |  | 0d |  |
| 31 | 1.3.1.1 | **Sprint 1 - Recebimento** |  | 29.5d | 2012-12-21 14:00 | 2013-01-31 18:00 |  | 45d |  |
| 32 | 1.3.1.1.1 | Reunião de inicio de sprint |  | 0.5d | 2012-12-21 14:00 | 2012-12-21 18:00 | 15, 19 | 45d | 0d |
| 33 | 1.3.1.1.2 | **Seal** |  | 28.5d | 2012-12-24 09:00 | 2013-01-31 14:00 |  | 45d |  |
| 34 | 1.3.1.1.2.1 | **Recebimento** |  | 28.5d | 2012-12-24 09:00 | 2013-01-31 14:00 |  | 45d |  |
| 35 | 1.3.1.1.2.1.1 | **Customização** |  | 15d | 2012-12-24 09:00 | 2013-01-11 18:00 |  | 45d |  |
| 36 | 1.3.1.1.2.1.1.1 | Customização Modulo WEB |  | 15d | 2012-12-24 09:00 | 2013-01-11 18:00 | 32 | 45d | 0d |
| 37 | 1.3.1.1.2.1.1.2 | Customização Modulo Coletor |  | 15d | 2012-12-24 09:00 | 2013-01-11 18:00 | 32 | 45d | 0d |
| 38 | 1.3.1.1.2.1.1.3 | Customização Modulo Integração |  | 15d | 2012-12-24 09:00 | 2013-01-11 18:00 | 32 | 45d | 0d |
| 39 | 1.3.1.1.2.1.1.4 | Liberação pacotes para testes integrados | milestone | 0d | 2013-01-11 18:00 | 2013-01-11 18:00 | 36, 37, 38, 137 | 45d | 0d |
| 40 | 1.3.1.1.2.1.2 | **Testes Integrados** |  | 7.5d | 2013-01-14 09:00 | 2013-01-23 14:00 |  | 45d |  |
| 41 | 1.3.1.1.2.1.2.1 | Plano de Teste |  | 1d | 2013-01-14 09:00 | 2013-01-14 18:00 | 39 | 45d | 0d |
| 42 | 1.3.1.1.2.1.2.2 | Aceite do Plano de Testes |  | 0.5d | 2013-01-15 09:00 | 2013-01-15 14:00 | 41 | 45d | 0d |
| 43 | 1.3.1.1.2.1.2.3 | Testes Web, Coletor e Integração |  | 5d | 2013-01-15 14:00 | 2013-01-22 14:00 | 42 | 45d | 0d |
| 44 | 1.3.1.1.2.1.2.4 | Aceite do testes Integrados |  | 0.5d | 2013-01-22 14:00 | 2013-01-22 18:00 | 43 | 45d | 0d |
| 45 | 1.3.1.1.2.1.2.5 | Liberação do Pacote para Homologação |  | 0.5d | 2013-01-23 09:00 | 2013-01-23 14:00 | 44 | 45d | 0d |
| 46 | 1.3.1.1.2.1.3 | **Homologação** |  | 6d | 2013-01-23 14:00 | 2013-01-31 14:00 |  | 45d |  |
| 47 | 1.3.1.1.2.1.3.1 | Homologação do Módulo |  | 5d | 2013-01-23 14:00 | 2013-01-30 14:00 | 45 | 45d | 0d |
| 48 | 1.3.1.1.2.1.3.2 | Ajustes e Correções |  | 5d | 2013-01-23 14:00 | 2013-01-30 14:00 | 45 | 45d | 0d |
| 49 | 1.3.1.1.2.1.3.3 | Aceite da Homologação |  | 0.5d | 2013-01-30 14:00 | 2013-01-30 18:00 | 47, 48 | 45d | 0d |
| 50 | 1.3.1.1.2.1.3.4 | Liberação do Pacote para produção |  | 0.5d | 2013-01-31 09:00 | 2013-01-31 14:00 | 49 | 49.5d | 0d |
| 51 | 1.3.1.1.3 | **Gemco** |  | 3d | 2012-12-21 14:00 | 2012-12-26 14:00 |  | 79d |  |
| 52 | 1.3.1.1.3.1 | **Recebimento** |  | 3d | 2012-12-21 14:00 | 2012-12-26 14:00 |  | 79d |  |
| 53 | 1.3.1.1.3.1.1 | Construção de Webservices para Intergração |  | 1d | 2012-12-21 14:00 | 2012-12-24 14:00 | 15, 19 | 79d | 0d |
| 54 | 1.3.1.1.3.1.2 | Liberação do Endpoint para Homologação |  | 1d | 2012-12-24 14:00 | 2012-12-25 14:00 | 53 | 79d | 0d |
| 55 | 1.3.1.1.3.1.3 | Liberação do Endpoint para Produção |  | 1d | 2012-12-25 14:00 | 2012-12-26 14:00 | 54 | 79d | 26d |
| 56 | 1.3.1.1.4 | Reunião de fim de sprint |  | 0.5d | 2013-01-31 14:00 | 2013-01-31 18:00 | 50, 55 | 53d |  |

| ID | WBS | Task | Type | Duration | Start | Finish | Predecessors | Total slack | Free slack |
| --- | --- | --- | --- | --- | --- | --- | --- | --- | --- |
| 57 | 1.3.1.2 | **Sprint 2 - Armazenamento** |  | 29.5d | 2012-12-21 14:00 | 2013-01-31 18:00 |  | 0d |  |
| 58 | 1.3.1.2.1 | Reunião de inicio de sprint |  | 0.5d | 2012-12-21 14:00 | 2012-12-21 18:00 | 15, 19 | 0d |  |
| 59 | 1.3.1.2.2 | **Seal** |  | 28.5d | 2012-12-24 09:00 | 2013-01-31 14:00 |  | 0d |  |
| 60 | 1.3.1.2.2.1 | **Armazenagem** |  | 28.5d | 2012-12-24 09:00 | 2013-01-31 14:00 |  | 0d |  |
| 61 | 1.3.1.2.2.1.1 | **Customização** |  | 15d | 2012-12-24 09:00 | 2013-01-11 18:00 |  | 0d |  |
| 62 | 1.3.1.2.2.1.1.1 | Customização Modulo WEB |  | 15d | 2012-12-24 09:00 | 2013-01-11 18:00 | 58, 15 | 0d |  |
| 63 | 1.3.1.2.2.1.1.2 | Customização Modulo Coletor |  | 15d | 2012-12-24 09:00 | 2013-01-11 18:00 | 15, 58 | 0d |  |
| 64 | 1.3.1.2.2.1.1.3 | Customização Modulo Integração |  | 15d | 2012-12-24 09:00 | 2013-01-11 18:00 | 15, 58 | 0d |  |
| 65 | 1.3.1.2.2.1.1.4 | Liberação pacotes para testes integrados | milestone | 0d | 2013-01-11 18:00 | 2013-01-11 18:00 | 62, 63, 64, 137 | 0d |  |
| 66 | 1.3.1.2.2.1.2 | **Testes Integrados** |  | 7.5d | 2013-01-14 09:00 | 2013-01-23 14:00 |  | 0d |  |
| 67 | 1.3.1.2.2.1.2.1 | Plano de Teste |  | 1d | 2013-01-14 09:00 | 2013-01-14 18:00 | 65 | 0d |  |
| 68 | 1.3.1.2.2.1.2.2 | Aceite do Plano de Testes |  | 0.5d | 2013-01-15 09:00 | 2013-01-15 14:00 | 67 | 0d |  |
| 69 | 1.3.1.2.2.1.2.3 | Testes Web, Coletor e Integração |  | 5d | 2013-01-15 14:00 | 2013-01-22 14:00 | 68 | 0d |  |
| 70 | 1.3.1.2.2.1.2.4 | Aceite do testes Integrados |  | 0.5d | 2013-01-22 14:00 | 2013-01-22 18:00 | 69 | 0d |  |
| 71 | 1.3.1.2.2.1.2.5 | Liberação do Pacote para Homologação |  | 0.5d | 2013-01-23 09:00 | 2013-01-23 14:00 | 70 | 0d |  |
| 72 | 1.3.1.2.2.1.3 | **Homologação** |  | 6d | 2013-01-23 14:00 | 2013-01-31 14:00 |  | 0d |  |
| 73 | 1.3.1.2.2.1.3.1 | Homologação do Módulo |  | 5d | 2013-01-23 14:00 | 2013-01-30 14:00 | 71 | 0d |  |
| 74 | 1.3.1.2.2.1.3.2 | Ajustes e Correções |  | 5d | 2013-01-23 14:00 | 2013-01-30 14:00 | 71 | 0d |  |
| 75 | 1.3.1.2.2.1.3.3 | Aceite da Homologação |  | 0.5d | 2013-01-30 14:00 | 2013-01-30 18:00 | 73, 74 | 0d |  |
| 76 | 1.3.1.2.2.1.3.4 | Liberação do Pacote para produção |  | 0.5d | 2013-01-31 09:00 | 2013-01-31 14:00 | 75 | 0d |  |
| 77 | 1.3.1.2.3 | **Gemco** |  | 3d | 2012-12-21 14:00 | 2012-12-26 14:00 |  | 26d |  |
| 78 | 1.3.1.2.3.1 | **Armazenagem** |  | 3d | 2012-12-21 14:00 | 2012-12-26 14:00 |  | 26d |  |
| 79 | 1.3.1.2.3.1.1 | Construção de Webservices para Intergração |  | 1d | 2012-12-21 14:00 | 2012-12-24 14:00 | 15, 19 | 26d | 0d |
| 80 | 1.3.1.2.3.1.2 | Liberação do Endpoint para Homologação |  | 1d | 2012-12-24 14:00 | 2012-12-25 14:00 | 79 | 26d | 0d |
| 81 | 1.3.1.2.3.1.3 | Liberação do Endpoint para Produção |  | 1d | 2012-12-25 14:00 | 2012-12-26 14:00 | 80 | 26d |  |
| 82 | 1.3.1.2.4 | Reunião de fim de sprint |  | 0.5d | 2013-01-31 14:00 | 2013-01-31 18:00 | 76, 81 | 0d |  |

| ID | WBS | Task | Duration | Start | Finish | Predecessors | Total slack | Free slack |
| --- | --- | --- | --- | --- | --- | --- | --- | --- |
| 83 | 1.3.1.3 | **Sprint 3 - Separação** | 74.5d | 2012-12-21 14:00 | 2013-04-04 18:00 |  | 8d |  |
| 84 | 1.3.1.3.1 | Reunião de inicio de sprint | 0.5d | 2013-02-01 09:00 | 2013-02-01 14:00 | 15, 19, 82 | 0d |  |
| 85 | 1.3.1.3.2 | **Seal** | 44d | 2013-02-01 14:00 | 2013-04-04 14:00 |  | 0d |  |
| 86 | 1.3.1.3.2.1 | **Separação** | 44d | 2013-02-01 14:00 | 2013-04-04 14:00 |  | 0d |  |
| 87 | 1.3.1.3.2.1.1 | **Customização** | 25.5d | 2013-02-01 14:00 | 2013-03-08 18:00 |  | 0d |  |
| 88 | 1.3.1.3.2.1.1.1 | Customização Modulo WEB | 25d | 2013-02-01 14:00 | 2013-03-08 14:00 | 84 | 0d |  |
| 89 | 1.3.1.3.2.1.1.2 | Customização Modulo Coletor | 25d | 2013-02-01 14:00 | 2013-03-08 14:00 | 84 | 0d |  |
| 90 | 1.3.1.3.2.1.1.3 | Customização Modulo Integração | 25d | 2013-02-01 14:00 | 2013-03-08 14:00 | 84 | 0d |  |
| 91 | 1.3.1.3.2.1.1.4 | Liberação pacotes para testes integrados | 0.5d | 2013-03-08 14:00 | 2013-03-08 18:00 | 88, 89, 90, 137 | 0d |  |
| 92 | 1.3.1.3.2.1.2 | **Testes Integrados** | 12.5d | 2013-03-11 09:00 | 2013-03-27 14:00 |  | 0d |  |
| 93 | 1.3.1.3.2.1.2.1 | Plano de Teste | 1d | 2013-03-11 09:00 | 2013-03-11 18:00 | 91 | 0d |  |
| 94 | 1.3.1.3.2.1.2.2 | Aceite do Plano de Testes | 0.5d | 2013-03-12 09:00 | 2013-03-12 14:00 | 93 | 0d |  |
| 95 | 1.3.1.3.2.1.2.3 | Testes Web, Coletor e Integração | 10d | 2013-03-12 14:00 | 2013-03-26 14:00 | 94 | 0d |  |
| 96 | 1.3.1.3.2.1.2.4 | Aceite do testes Integrados | 0.5d | 2013-03-26 14:00 | 2013-03-26 18:00 | 95 | 0d |  |
| 97 | 1.3.1.3.2.1.2.5 | Liberação do Pacote para Homologação | 0.5d | 2013-03-27 09:00 | 2013-03-27 14:00 | 96 | 0d |  |
| 98 | 1.3.1.3.2.1.3 | **Homologação** | 6d | 2013-03-27 14:00 | 2013-04-04 14:00 |  | 0d |  |
| 99 | 1.3.1.3.2.1.3.1 | Homologação do Módulo | 5d | 2013-03-27 14:00 | 2013-04-03 14:00 | 97 | 0d |  |
| 100 | 1.3.1.3.2.1.3.2 | Ajustes e Correções | 5d | 2013-03-27 14:00 | 2013-04-03 14:00 | 97 | 0d |  |
| 101 | 1.3.1.3.2.1.3.3 | Aceite da Homologação | 0.5d | 2013-04-03 14:00 | 2013-04-03 18:00 | 99, 100 | 0d |  |
| 102 | 1.3.1.3.2.1.3.4 | Liberação do Pacote para produção | 0.5d | 2013-04-04 09:00 | 2013-04-04 14:00 | 101 | 6.5d | 0d |
| 103 | 1.3.1.3.3 | **Gemco** | 3d | 2012-12-21 14:00 | 2012-12-26 14:00 |  | 79d |  |
| 104 | 1.3.1.3.3.1 | **Separação** | 3d | 2012-12-21 14:00 | 2012-12-26 14:00 |  | 79d |  |
| 105 | 1.3.1.3.3.1.1 | Construção de Webservices para Intergração | 1d | 2012-12-21 14:00 | 2012-12-24 14:00 | 15, 19 | 79d | 0d |
| 106 | 1.3.1.3.3.1.2 | Liberação do Endpoint para Homologação | 1d | 2012-12-24 14:00 | 2012-12-25 14:00 | 105 | 79d | 0d |
| 107 | 1.3.1.3.3.1.3 | Liberação do Endpoint para Produção | 1d | 2012-12-25 14:00 | 2012-12-26 14:00 | 106 | 79d | 71d |
| 108 | 1.3.1.3.4 | Reunião de fim de sprint | 0.5d | 2013-04-04 14:00 | 2013-04-04 18:00 | 102, 107 | 8d |  |

| ID | WBS | Task | Duration | Start | Finish | Predecessors | Total slack | Free slack |
| --- | --- | --- | --- | --- | --- | --- | --- | --- |
| 109 | 1.3.1.4 | **Sprint 4 - Movimentação Kanban** | 59d | 2012-12-21 14:00 | 2013-03-14 14:00 |  | 23.5d |  |
| 110 | 1.3.1.4.1 | Reunião de inicio de sprint | 0.5d | 2013-02-01 09:00 | 2013-02-01 14:00 | 15, 19, 82 | 15.5d | 0d |
| 111 | 1.3.1.4.2 | **Seal** | 28.5d | 2013-02-01 14:00 | 2013-03-13 18:00 |  | 15.5d |  |
| 112 | 1.3.1.4.2.1 | **Movimentação Kanban** | 28.5d | 2013-02-01 14:00 | 2013-03-13 18:00 |  | 15.5d |  |
| 113 | 1.3.1.4.2.1.1 | **Customização** | 10.5d | 2013-02-01 14:00 | 2013-02-15 18:00 |  | 15.5d |  |
| 114 | 1.3.1.4.2.1.1.1 | Customização Modulo WEB | 10d | 2013-02-01 14:00 | 2013-02-15 14:00 | 110 | 15.5d | 0d |
| 115 | 1.3.1.4.2.1.1.2 | Customização Modulo Coletor | 10d | 2013-02-01 14:00 | 2013-02-15 14:00 | 110 | 15.5d | 0d |
| 116 | 1.3.1.4.2.1.1.3 | Customização Modulo Integração | 10d | 2013-02-01 14:00 | 2013-02-15 14:00 | 110 | 15.5d | 0d |
| 117 | 1.3.1.4.2.1.1.4 | Liberação pacotes para testes integrados | 0.5d | 2013-02-15 14:00 | 2013-02-15 18:00 | 114, 115, 116, 137 | 15.5d | 0d |
| 118 | 1.3.1.4.2.1.2 | **Testes Integrados** | 12d | 2013-02-18 09:00 | 2013-03-05 18:00 |  | 15.5d |  |
| 119 | 1.3.1.4.2.1.2.1 | Plano de Teste | 1d | 2013-02-18 09:00 | 2013-02-18 18:00 | 117 | 15.5d | 0d |
| 120 | 1.3.1.4.2.1.2.2 | Aceite do Plano de Testes | 0.5d | 2013-02-19 09:00 | 2013-02-19 14:00 | 119 | 15.5d | 0d |
| 121 | 1.3.1.4.2.1.2.3 | Testes Web, Coletor e Integração | 5d | 2013-02-19 14:00 | 2013-02-26 14:00 | 120 | 15.5d | 0d |
| 122 | 1.3.1.4.2.1.2.4 | Aceite do testes Integrados | 5d | 2013-02-26 14:00 | 2013-03-05 14:00 | 121 | 15.5d | 0d |
| 123 | 1.3.1.4.2.1.2.5 | Liberação do Pacote para Homologação | 0.5d | 2013-03-05 14:00 | 2013-03-05 18:00 | 122 | 15.5d | 0d |
| 124 | 1.3.1.4.2.1.3 | **Homologação** | 6d | 2013-03-06 09:00 | 2013-03-13 18:00 |  | 15.5d |  |
| 125 | 1.3.1.4.2.1.3.1 | Homologação do Módulo | 5d | 2013-03-06 09:00 | 2013-03-12 18:00 | 123 | 15.5d | 0d |
| 126 | 1.3.1.4.2.1.3.2 | Ajustes e Correções | 5d | 2013-03-06 09:00 | 2013-03-12 18:00 | 123 | 15.5d | 0d |
| 127 | 1.3.1.4.2.1.3.3 | Aceite da Homologação | 0.5d | 2013-03-13 09:00 | 2013-03-13 14:00 | 125, 126 | 15.5d | 0d |
| 128 | 1.3.1.4.2.1.3.4 | Liberação do Pacote para produção | 0.5d | 2013-03-13 14:00 | 2013-03-13 18:00 | 127 | 23d | 0d |
| 129 | 1.3.1.4.3 | **Gemco** | 3d | 2012-12-21 14:00 | 2012-12-26 14:00 |  | 79d |  |
| 130 | 1.3.1.4.3.1 | **Movimentação Kanban** | 3d | 2012-12-21 14:00 | 2012-12-26 14:00 |  | 79d |  |
| 131 | 1.3.1.4.3.1.1 | Construção de Webservices para Intergração | 1d | 2012-12-21 14:00 | 2012-12-24 14:00 | 15, 19 | 79d | 0d |
| 132 | 1.3.1.4.3.1.2 | Liberação do Endpoint para Homologação | 1d | 2012-12-24 14:00 | 2012-12-25 14:00 | 131 | 79d | 0d |
| 133 | 1.3.1.4.3.1.3 | Liberação do Endpoint para Produção | 1d | 2012-12-25 14:00 | 2012-12-26 14:00 | 132 | 79d | 55.5d |
| 134 | 1.3.1.4.4 | Reunião de fim de sprint | 0.5d | 2013-03-14 09:00 | 2013-03-14 14:00 | 128, 133 | 23.5d |  |

| ID | WBS | Task | Duration | Start | Finish | Predecessors | Total slack | Free slack |
| --- | --- | --- | --- | --- | --- | --- | --- | --- |
| 135 | 1.4 | **Transição** | 89d | 2012-12-13 09:00 | 2013-04-16 18:00 |  | 0d |  |
| 136 | 1.4.1 | **Ambientação** | 1d | 2012-12-13 09:00 | 2012-12-13 18:00 |  | 21d |  |
| 137 | 1.4.1.1 | Disponibilização de Servidores para Homologação | 1d | 2012-12-13 09:00 | 2012-12-13 18:00 | 15 | 21d |  |
| 138 | 1.4.1.2 | Disponibilização de Servidores para Produção | 1d | 2012-12-13 09:00 | 2012-12-13 18:00 | 15 | 88d |  |
| 139 | 1.4.2 | **Publicação** | 47d | 2013-01-31 14:00 | 2013-04-08 14:00 |  | 6.5d |  |
| 140 | 1.4.2.1 | Germud - Módulo Recebimento | 1d | 2013-01-31 14:00 | 2013-02-01 14:00 | 50 | 49.5d | 0d |
| 141 | 1.4.2.2 | Germud - Módulo Armazenagem | 1d | 2013-02-01 14:00 | 2013-02-04 14:00 | 76, 140 | 49.5d | 43d |
| 142 | 1.4.2.3 | Germud - Módulo Separação | 1d | 2013-04-04 14:00 | 2013-04-05 14:00 | 102, 141 | 6.5d | 0d |
| 143 | 1.4.2.4 | Germud - Módulo Kanban | 1d | 2013-04-05 14:00 | 2013-04-08 14:00 | 128, 142 | 6.5d |  |
| 144 | 1.4.3 | **Treinamento** | 84d | 2012-12-13 09:00 | 2013-04-09 18:00 |  | 0d |  |
| 145 | 1.4.3.1 | Definição dos Multiplicadores | 1d | 2012-12-13 09:00 | 2012-12-13 18:00 | 15 | 79d | 34d |
| 146 | 1.4.3.2 | **Modulo Recebimento** | 4d | 2013-01-31 09:00 | 2013-02-05 18:00 |  | 45d |  |
| 147 | 1.4.3.2.1 | Material de Treinamento | 2d | 2013-01-31 09:00 | 2013-02-01 18:00 | 145, 49 | 45d | 0d |
| 148 | 1.4.3.2.2 | Treinamento Gerencial | 0.5d | 2013-02-04 09:00 | 2013-02-04 14:00 | 147 | 46d | 1d |
| 149 | 1.4.3.2.3 | Treinamento Operacional | 1.5d | 2013-02-04 09:00 | 2013-02-05 14:00 | 147 | 45d | 0d |
| 150 | 1.4.3.2.4 | Aceite do Treinamento | 0.5d | 2013-02-05 14:00 | 2013-02-05 18:00 | 148, 149 | 45d | 0d |
| 151 | 1.4.3.3 | **Modulo Armazenagem** | 4d | 2013-01-31 09:00 | 2013-02-05 18:00 |  | 45d |  |
| 152 | 1.4.3.3.1 | Material de Treinamento | 2d | 2013-01-31 09:00 | 2013-02-01 18:00 | 145, 75 | 45d | 0d |
| 153 | 1.4.3.3.2 | Treinamento Gerencial | 0.5d | 2013-02-04 09:00 | 2013-02-04 14:00 | 152 | 46d | 1d |
| 154 | 1.4.3.3.3 | Treinamento Operacional | 1.5d | 2013-02-04 09:00 | 2013-02-05 14:00 | 152 | 45d | 0d |
| 155 | 1.4.3.3.4 | Aceite do Treinamento | 0.5d | 2013-02-05 14:00 | 2013-02-05 18:00 | 153, 154 | 45d | 0d |
| 156 | 1.4.3.4 | **Modulo Separação** | 4d | 2013-04-04 09:00 | 2013-04-09 18:00 |  | 0d |  |
| 157 | 1.4.3.4.1 | Material de Treinamento | 2d | 2013-04-04 09:00 | 2013-04-05 18:00 | 145, 101 | 0d |  |
| 158 | 1.4.3.4.2 | Treinamento Gerencial | 0.5d | 2013-04-08 09:00 | 2013-04-08 14:00 | 157 | 1d |  |
| 159 | 1.4.3.4.3 | Treinamento Operacional | 1.5d | 2013-04-08 09:00 | 2013-04-09 14:00 | 157 | 0d |  |
| 160 | 1.4.3.4.4 | Aceite do Treinamento | 0.5d | 2013-04-09 14:00 | 2013-04-09 18:00 | 158, 159 | 0d |  |

| ID | WBS | Task | Type | Duration | Start | Finish | Predecessors | Total slack | Free slack |
| --- | --- | --- | --- | --- | --- | --- | --- | --- | --- |
| 161 | 1.4.3.5 | **Modulo Movimentação de Kanban** |  | 4d | 2013-03-13 14:00 | 2013-03-19 14:00 |  | 15.5d |  |
| 162 | 1.4.3.5.1 | Material de Treinamento |  | 2d | 2013-03-13 14:00 | 2013-03-15 14:00 | 127, 145 | 15.5d | 0d |
| 163 | 1.4.3.5.2 | Treinamento Gerencial |  | 0.5d | 2013-03-15 14:00 | 2013-03-15 18:00 | 162 | 16.5d | 1d |
| 164 | 1.4.3.5.3 | Treinamento Operacional |  | 1.5d | 2013-03-15 14:00 | 2013-03-18 18:00 | 162 | 15.5d | 0d |
| 165 | 1.4.3.5.4 | Aceite do Treinamento |  | 0.5d | 2013-03-19 09:00 | 2013-03-19 14:00 | 163, 164 | 15.5d | 0d |
| 166 | 1.4.4 | **Go Live** |  | 45d | 2013-02-05 18:00 | 2013-04-09 18:00 |  | 5d |  |
| 167 | 1.4.4.1 | Módulo Recebimento | milestone | 0d | 2013-02-05 18:00 | 2013-02-05 18:00 | 150 | 50d |  |
| 168 | 1.4.4.2 | Módulo Armazenagem | milestone | 0d | 2013-02-05 18:00 | 2013-02-05 18:00 | 155 | 50d |  |
| 169 | 1.4.4.3 | Módulo Separação | milestone | 0d | 2013-04-09 18:00 | 2013-04-09 18:00 | 160 | 5d |  |
| 170 | 1.4.4.4 | Módulo Kanban | milestone | 0d | 2013-03-19 14:00 | 2013-03-19 14:00 | 165 | 20.5d |  |
| 171 | 1.4.5 | **OIA** |  | 50d | 2013-02-06 09:00 | 2013-04-16 18:00 |  | 0d |  |
| 172 | 1.4.5.1 | Módulo Recebimento |  | 5d | 2013-02-06 09:00 | 2013-02-12 18:00 | 150 | 45d |  |
| 173 | 1.4.5.2 | Módulo Armazenagem |  | 5d | 2013-02-06 09:00 | 2013-02-12 18:00 | 155 | 45d |  |
| 174 | 1.4.5.3 | Módulo Separação |  | 5d | 2013-04-10 09:00 | 2013-04-16 18:00 | 160 | 0d |  |
| 175 | 1.4.5.4 | Módulo Kanban |  | 5d | 2013-03-19 14:00 | 2013-03-26 14:00 | 165 | 15.5d |  |
| 176 | 2 | Reunião de Fim de Projeto | milestone | 0d | 2013-04-16 18:00 | 2013-04-16 18:00 | 172, 173, 174, 175, 28 | 0d |  |
