# SEALSOFTWARETEAM - ONIX - MONITORAMENTO DE ANIMAIS

Schedule from MS Project, 2013-01-07 to 2013-03-11.

## Calendars

- Padrão: Mon-Fri 09:00-12:00, 13:00-18:00; Sat-Sun off.

## Schedule

| ID | WBS | Task | Type | Duration | Start | Finish | Predecessors | Total slack |
| --- | --- | --- | --- | --- | --- | --- | --- | --- |
| 1 | 1 | **CONSTRUÇÃO** |  | 46d | 2013-01-07 | 2013-03-11 |  | 0d |
| 2 | 1.1 | **SPRINT 1** |  | 27d | 2013-01-07 | 2013-02-12 |  | 0d |
| 3 | 1.1.1 | Reunião Inicio de Sprint |  | 0.5d | 2013-01-07 | 2013-01-07 |  | 0d |
| 4 | 1.1.2 | Conversão do projeto em Entity Framework |  | 4d | 2013-01-07 | 2013-01-11 | 3 | 0d |
| 5 | 1.1.3 | Criar tela de edição para produtor |  | 2d | 2013-01-11 | 2013-01-15 | 4 | 0d |
| 6 | 1.1.4 | Criar tela para edição para auditores |  | 2d | 2013-01-15 | 2013-01-17 | 5 | 0d |
| 7 | 1.1.5 | Criar tela de pesquisa para produtores |  | 2d | 2013-01-17 | 2013-01-21 | 6 | 0d |
| 8 | 1.1.6 | Criar tela de pesquisa para auditores |  | 2d | 2013-01-21 | 2013-01-23 | 7 | 0d |
| 9 | 1.1.7 | Criar um dashboard com totalizadores e sumários |  | 3d | 2013-01-23 | 2013-01-28 | 8 | 0d |
| 10 | 1.1.8 | Modulo GPS |  | 1d | 2013-01-28 | 2013-01-29 | 9 | 0d |
| 11 | 1.1.9 | Exportação para Excel |  | 1d | 2013-01-29 | 2013-01-30 | 10 | 0d |
| 12 | 1.1.10 | Revisar telas de consulta (data/hora) |  | 1d | 2013-01-30 | 2013-01-31 | 11 | 0d |
| 13 | 1.1.11 | Alterar os layouts dos e-mails |  | 1d | 2013-01-31 | 2013-02-01 | 12 | 0d |
| 14 | 1.1.12 | Alterar layout da Home adicionando imagens com animais |  | 1d | 2013-02-01 | 2013-02-04 | 13 | 0d |
| 15 | 1.1.13 | Usabilidade do coletor |  | 2d | 2013-02-04 | 2013-02-06 | 14 | 0d |
| 16 | 1.1.14 | Módulo de acompanhamento de Gestação Bovina |  | 3d | 2013-02-06 | 2013-02-11 | 15 | 0d |
| 17 | 1.1.15 | Homologação Sprint 1 |  | 1d | 2013-02-11 | 2013-02-12 | 3, 4, 5, 6, 7, 8, 9, 10, 11, 12, 13, 14, 16 | 0d |
| 18 | 1.1.16 | Aceite Sprint 1 |  | 0.5d | 2013-02-12 | 2013-02-12 | 17 | 0d |
| 19 | 1.1.17 | Entrega do Sprint 1 | milestone | 0d | 2013-02-12 | 2013-02-12 | 18 | 0d |
| 20 | 1.1.18 | Reunião de Fim de Sprint | milestone | 0d | 2013-02-12 | 2013-02-12 | 19 | 0d |
| 21 | 1.2 | **SPRINT 2** |  | 7d | 2013-02-13 | 2013-02-21 |  | 0d |
| 22 | 1.2.1 | Reunião inicio de Sprint |  | 0.5d | 2013-02-13 | 2013-02-13 | 20 | 0d |
| 23 | 1.2.2 | Módulo de Inventário de animais |  | 5d | 2013-02-13 | 2013-02-20 | 22 | 0d |
| 24 | 1.2.3 | Homologação Sprint 2 |  | 1d | 2013-02-20 | 2013-02-21 | 23 | 0d |
| 25 | 1.2.4 | Aceite Sprint 2 |  | 0.5d | 2013-02-21 | 2013-02-21 | 24 | 0d |
| 26 | 1.2.5 | Entrega Sprint 2 | milestone | 0d | 2013-02-21 | 2013-02-21 | 25 | 0d |
| 27 | 1.2.6 | Reunião de Fim de Sprint | milestone | 0d | 2013-02-21 | 2013-02-21 | 26 | 0d |

| ID | WBS | Task | Type | Duration | Start | Finish | Predecessors | Total slack |
| --- | --- | --- | --- | --- | --- | --- | --- | --- |
| 28 | 1.3 | **SPRINT 3** |  | 6d | 2013-02-22 | 2013-03-01 |  | 0d |
| 29 | 1.3.1 | Reunião inicio de Sprint |  | 0.5d | 2013-02-22 | 2013-02-22 | 27 | 0d |
| 30 | 1.3.2 | Criar módulo de relatórios |  | 5d | 2013-02-22 | 2013-03-01 | 29 | 0d |
| 31 | 1.3.3 | Aceite Sprint 3 |  | 0.5d | 2013-03-01 | 2013-03-01 | 30 | 0d |
| 32 | 1.3.4 | Entrega Sprint 3 | milestone | 0d | 2013-03-01 | 2013-03-01 | 31 | 0d |
| 33 | 1.3.5 | Reunião de Fim de Sprint | milestone | 0d | 2013-03-01 | 2013-03-01 | 32 | 0d |
| 34 | 1.4 | **SPRINT 4** |  | 6d | 2013-03-04 | 2013-03-11 |  | 0d |
| 35 | 1.4.1 | Reunião inicio de Sprint |  | 0.5d | 2013-03-04 | 2013-03-04 | 33 | 0d |
| 36 | 1.4.2 | Criar EDIs para padronização de integração |  | 5d | 2013-03-04 | 2013-03-11 | 35 | 0d |
| 37 | 1.4.3 | Aceite Sprint 3 |  | 0.5d | 2013-03-11 | 2013-03-11 | 36 | 0d |
| 38 | 1.4.4 | Entrega Sprint 3 | milestone | 0d | 2013-03-11 | 2013-03-11 | 37 | 0d |
| 39 | 1.4.5 | Reunião de Fim de Sprint | milestone | 0d | 2013-03-11 | 2013-03-11 | 38 | 0d |
