# Macro Cronograma - Walmart

Schedule from MS Project, 2013-10-04 to 2013-12-25.

## Calendars

- Padrão: Mon-Fri 09:00-12:00, 13:00-18:00; Sat-Sun off.

## Schedule

| ID | WBS | Task | Type | Duration | Start | Finish | Predecessors | Total slack |
| --- | --- | --- | --- | --- | --- | --- | --- | --- |
| 1 | 1 | **Walmart - Voice Picking** |  | 59d | 2013-10-04 | 2013-12-25 |  | 0d |
| 2 | 1.1 | **Iniciação** |  | 11d | 2013-10-04 | 2013-10-18 |  | 0d |
| 3 | 1.1.1 | Kickoff |  | 1d | 2013-10-04 | 2013-10-04 |  | 0d |
| 4 | 1.1.2 | Levantamento de Interfaces de Integração |  | 10d | 2013-10-07 | 2013-10-18 | 3 | 0d |
| 5 | 1.2 | **Elaboração** |  | 4d | 2013-10-21 | 2013-10-24 |  | 0d |
| 6 | 1.2.1 | Especificação Funcional |  | 3d | 2013-10-21 | 2013-10-23 | 4 | 0d |
| 7 | 1.2.2 | Aceite da Especificação |  | 1d | 2013-10-24 | 2013-10-24 | 6 | 0d |
| 8 | 1.3 | **Construção** |  | 36d | 2013-10-25 | 2013-12-13 |  | 0d |
| 9 | 1.3.1 | Customização Kairos Middleware |  | 10d | 2013-10-25 | 2013-11-07 | 7 | 0d |
| 10 | 1.3.2 | Customização Legado |  | 10d | 2013-10-25 | 2013-11-07 | 7 | 0d |
| 11 | 1.3.3 | Montagem do ambiente de homologação |  | 2d | 2013-10-25 | 2013-10-28 | 7 | 8d |
| 12 | 1.3.4 | Testes Integrados |  | 10d | 2013-11-08 | 2013-11-21 | 9, 10, 11 | 0d |
| 13 | 1.3.5 | Homologação |  | 10d | 2013-11-22 | 2013-12-05 | 12 | 0d |
| 14 | 1.3.6 | Stress Test |  | 5d | 2013-12-06 | 2013-12-12 | 13 | 0d |
| 15 | 1.3.7 | Aceite da Homologação |  | 1d | 2013-12-13 | 2013-12-13 | 14 | 0d |
| 16 | 1.4 | **Transição** |  | 44d | 2013-10-25 | 2013-12-25 |  | 0d |
| 17 | 1.4.1 | Montagem do ambiente de Produção |  | 2d | 2013-10-25 | 2013-10-28 | 7 | 37d |
| 18 | 1.4.2 | Material de Treinamento |  | 1d | 2013-12-16 | 2013-12-16 | 15 | 0d |
| 19 | 1.4.3 | Treinamento |  | 2d | 2013-12-17 | 2013-12-18 | 18 | 0d |
| 20 | 1.4.4 | Go Live | milestone | 0d | 2013-12-18 | 2013-12-18 | 17, 18, 19 | 0d |
| 21 | 1.4.5 | Acompanhamento |  | 5d | 2013-12-19 | 2013-12-25 | 20 | 0d |
